# 中联泰国园区DCOM平台项目

Schedule from a web Gantt chart, 2025-12-30 to 2025-12-30.
Saturdays and Sundays are off

## Schedule

| ID | WBS | Task | Duration | Start | Finish |
| --- | --- | --- | --- | --- | --- |
| 2 | 1 | DCOM系统合同签订 | 1d | 2025-12-30 | 2025-12-30 |
| 3 | 2 | 项目立项启动及启动会议 | 1d | 2025-12-30 | 2025-12-30 |
| 4 | 3 | DCOM系统硬件设备采购 | 1d | 2025-12-30 | 2025-12-30 |
| 5 | 4 | 硬件设备发货及海运报关 | 1d | 2025-12-30 | 2025-12-30 |
| 6 | 5 | 园区网络施工及设备安装 | 1d | 2025-12-30 | 2025-12-30 |
| 7 | 6 | 园区网络及设备调试 | 1d | 2025-12-30 | 2025-12-30 |
| 8 | 7 | DCOM平台环境部署 | 1d | 2025-12-30 | 2025-12-30 |
| 9 | 8 | 机房楼系统交付（一期-D1楼） | 1d | 2025-12-30 | 2025-12-30 |
| 10 | 9 | 机房楼系统交付（二期-D1楼） | 1d | 2025-12-30 | 2025-12-30 |
| 11 | 10 | DCOM平台南向数据接入（一期-D1楼） | 1d | 2025-12-30 | 2025-12-30 |
